# Plantilla_Proyecto TI.mpp

Schedule from MS Project, 2010-04-27 to 2010-05-04, 9.5 hours a day.
OFICINA

## Calendars

- Horario 8:30 - 7:05: Mon-Thu 08:30-13:00, 14:00-19:00; Fri 08:30-13:00, 14:00-18:30; Sat-Sun off. Exceptions (off unless hours are given): 2010-05-01 to 2019-05-01 (Feriado 1 de Mayo, recurring).

## Resources

| Resource | Group |
| --- | --- |
| Jefe de Proyecto |  |
| Analista Programador | AP |
| Arquitecto | ARQ |
| Analista de Calidad | QA |
| Usuario | USU |
| Programador | PROG |

## Schedule

| ID | WBS | Task | Duration | Start | Finish | Predecessors | Baseline start | Baseline finish | Baseline duration | Total slack | Free slack | Resources | Work |
| --- | --- | --- | --- | --- | --- | --- | --- | --- | --- | --- | --- | --- | --- |
| 1 | 1 | **NOMBRE DEL PROYECTO** | 5.3d? | 2010-04-27 08:30 | 2010-05-04 11:50 |  | 2010-04-27 08:30 | 2010-05-05 19:00 | 6.95d? | 0d |  |  | 61h |
| 2 | 1.1 | **Gestión del Proyecto** | 5.3d? | 2010-04-27 08:30 | 2010-05-04 11:50 |  | 2010-04-27 08:30 | 2010-04-28 19:00 | 2d? | 0d |  |  | 14h |
| 3 | 1.1.1 | **Inicio** | 0.32d? | 2010-04-27 08:30 | 2010-04-27 11:30 |  | 2010-04-27 08:30 | 2010-04-27 12:30 | 0.42d? | 0d |  |  | 3h |
| 4 | 1.1.1.1 | Revisar SRQ - Solicitud de Requerimientos | 1h? | 2010-04-27 08:30 | 2010-04-27 09:30 |  | 2010-04-27 08:30 | 2010-04-27 09:30 | 1h? | 0d |  | Jefe de Proyecto | 1h |
| 5 | 1.1.1.2 | Elaborar ACP - Acta de constitución del proyecto | 1h? | 2010-04-27 09:30 | 2010-04-27 10:30 | 4 | 2010-04-27 10:30 | 2010-04-27 11:30 | 1h? | 0d |  | Jefe de Proyecto | 1h |
| 6 | 1.1.1.3 | Elaborar y coordinar KOF - Presentación de Kickoff (O) | 1h? | 2010-04-27 10:30 | 2010-04-27 11:30 | 5 | 2010-04-27 11:30 | 2010-04-27 12:30 | 1h? | 0d |  | Jefe de Proyecto | 1h |
| 7 | 1.1.2 | **Planificación** | 0.42d? | 2010-04-27 11:30 | 2010-04-27 16:30 | 3 | 2010-04-27 12:30 | 2010-04-27 17:30 | 0.42d? | 0d |  |  | 4h |
| 8 | 1.1.2.1 | Elaborar EDT | 1h? | 2010-04-27 11:30 | 2010-04-27 12:30 | 6 | 2010-04-27 12:30 | 2010-04-27 14:30 | 1h? | 0d |  | Jefe de Proyecto | 1h |
| 9 | 1.1.2.2 | Elaborar CRO - Cronograma/Línea Base | 1h? | 2010-04-27 12:30 | 2010-04-27 14:30 | 8 | 2010-04-27 14:30 | 2010-04-27 15:30 | 1h? | 0d |  | Jefe de Proyecto | 1h |
| 10 | 1.1.2.3 | Definir RFP - Solicitud de propuesta a proveedores (O) | 1h? | 2010-04-27 14:30 | 2010-04-27 15:30 | 9 | 2010-04-27 15:30 | 2010-04-27 16:30 | 1h? | 0d |  | Jefe de Proyecto | 1h |
| 11 | 1.1.2.4 | Elaborar MEP - Matriz de evaluación de proveedores (O) | 1h? | 2010-04-27 15:30 | 2010-04-27 16:30 | 10 | 2010-04-27 16:30 | 2010-04-27 17:30 | 1h? | 0d |  | Jefe de Proyecto | 1h |
| 12 | 1.1.3 | **Validación** | 0.21d? | 2010-04-27 16:30 | 2010-04-27 18:30 | 7 | 2010-04-27 17:30 | 2010-04-28 11:00 | 0.42d? | 4.25d |  |  | 2h |
| 13 | 1.1.3.1 | Revisar DSC - Documento de solicitud de cambio (O) | 1h? | 2010-04-27 16:30 | 2010-04-27 17:30 | 11 | 2010-04-27 17:30 | 2010-04-27 18:30 | 1h? | 4.25d | 0d | Jefe de Proyecto | 1h |
| 14 | 1.1.3.2 | Elaborar MAI - Matriz de analisis de impacto del cambio (O) | 1h? | 2010-04-27 17:30 | 2010-04-27 18:30 | 13 | 2010-04-27 18:30 | 2010-04-28 09:00 | 1h? | 4.25d | 0d | Jefe de Proyecto | 1h |
| 15 | 1.1.4 | **Monitoreo** | 0.11d? | 2010-04-27 18:30 | 2010-04-28 09:00 | 7 | 2010-04-28 11:00 | 2010-04-28 15:00 | 0.32d? | 4.25d |  |  | 1h |
| 16 | 1.1.4.1 | **Coordinar Reuniones de Seguimiento (con usuario)** | 0.11d? | 2010-04-27 18:30 | 2010-04-28 09:00 |  | 2010-04-28 12:00 | 2010-04-28 13:00 | 0.11d? | 4.25d |  |  | 1h |
| 17 | 1.1.4.1.1 | Elaborar IEP - Informe Estado del Proyecto | 1h? | 2010-04-27 18:30 | 2010-04-28 09:00 | 14 | 2010-04-28 12:00 | 2010-04-28 13:00 | 1h? | 4.25d |  | Jefe de Proyecto | 1h |
| 18 | 1.1.5 | **Cierre** | 0.42d? | 2010-05-03 18:20 | 2010-05-04 11:50 | 68 | 2010-04-28 15:00 | 2010-04-28 19:00 | 0.42d? | 0d |  |  | 4h |
| 19 | 1.1.5.1 | Efectuar ENC - Encuesta de satisfacción de usuarios | 1h? | 2010-05-03 18:20 | 2010-05-04 08:50 |  | 2010-04-28 15:00 | 2010-04-28 16:00 | 1h? | 0d |  | Jefe de Proyecto | 1h |
| 20 | 1.1.5.2 | Elaborar IPP - Informe de performance del proyecto | 1h? | 2010-05-04 08:50 | 2010-05-04 09:50 | 19 | 2010-04-28 16:00 | 2010-04-28 17:00 | 1h? | 0d |  | Jefe de Proyecto | 1h |
| 21 | 1.1.5.3 | Elaborar y entregar AFP - Acta de finalización del proyecto | 1h? | 2010-05-04 09:50 | 2010-05-04 10:50 | 20 | 2010-04-28 17:00 | 2010-04-28 18:00 | 1h? | 0d |  | Jefe de Proyecto | 1h |
| 22 | 1.1.5.4 | Elaborar INF - Informe General | 1h? | 2010-05-04 10:50 | 2010-05-04 11:50 | 21 | 2010-04-28 18:00 | 2010-04-28 19:00 | 1h? | 0d |  | Jefe de Proyecto | 1h |
| 23 | 1.2 | **Análisis** | 0.56d? | 2010-04-27 16:30 | 2010-04-28 11:20 | 7 | 2010-04-29 08:30 | 2010-04-29 16:30 | 0.74d? | 0d |  |  | 6h |
| 24 | 1.2.1 | Elaborar CRQ - Catálogo de RQs | 1h? | 2010-04-27 16:30 | 2010-04-27 17:30 |  | 2010-04-29 08:30 | 2010-04-29 09:30 | 1h? | 0d |  | Analista Programador | 1h |
| 25 | 1.2.2 | Elaborar DAR - Documento de análisis de RQ | 1h? | 2010-04-27 17:30 | 2010-04-27 18:30 | 24 | 2010-04-29 09:30 | 2010-04-29 10:30 | 1h? | 0d |  | Analista Programador | 1h |
| 26 | 1.2.3 | Elaborar DCU - Diagrama Casos de Uso | 1h? | 2010-04-27 18:30 | 2010-04-28 09:00 | 25 | 2010-04-29 11:30 | 2010-04-29 12:30 | 1h? | 0d |  | Analista Programador | 1h |
| 27 | 1.2.4 | Actualizar GTP - Glosario de términos | 1h? | 2010-04-28 09:00 | 2010-04-28 10:00 | 26 | 2010-04-29 12:30 | 2010-04-29 14:30 | 1h? | 0d |  | Analista Programador | 1h |
| 28 | 1.2.5 | Elaborar MCR - Trazabilidad CU - RQ | 1h? | 2010-04-28 10:00 | 2010-04-28 11:00 | 27 | 2010-04-29 14:30 | 2010-04-29 15:30 | 1h? | 0d |  | Analista Programador | 1h |
| 29 | 1.2.6 | Presentar y aprobar DAR, DCU y MCR | 0.33h? | 2010-04-28 11:00 | 2010-04-28 11:20 | 28 | 2010-04-29 15:30 | 2010-04-29 16:30 | 1h? | 0d |  | Analista Programador; Jefe de Proyecto; Usuario | 1h |

| ID | WBS | Task | Duration | Start | Finish | Predecessors | Baseline start | Baseline finish | Baseline duration | Total slack | Resources | Work |
| --- | --- | --- | --- | --- | --- | --- | --- | --- | --- | --- | --- | --- |
| 30 | 1.3 | **Diseño** | 0.53d? | 2010-04-28 11:20 | 2010-04-28 17:20 | 23 | 2010-04-29 16:30 | 2010-05-03 10:00 | 1.37d? | 0d |  | 9h |
| 31 | 1.3.1 | Elaborar DET - Especificaciones técnica | 1h? | 2010-04-28 11:20 | 2010-04-28 12:20 |  | 2010-04-29 18:30 | 2010-04-30 09:00 | 1h? | 0.42d | Analista Programador | 1h |
| 32 | 1.3.2 | Revisar DED - Estándares de diseño (O) | 1h? | 2010-04-28 11:20 | 2010-04-28 12:20 |  | 2010-04-30 11:00 | 2010-04-30 12:00 | 1h? | 0d | Analista Programador | 1h |
| 33 | 1.3.3 | Definir PPR - Plan pruebas | 1h? | 2010-04-28 11:20 | 2010-04-28 12:20 |  | 2010-04-30 14:00 | 2010-04-30 15:00 | 1h? | 0.42d | Analista de Calidad | 1h |
| 34 | 1.3.4 | Elaborar y validar MSE - Matriz de Seguridad | 1h? | 2010-04-28 12:20 | 2010-04-28 14:20 | 32 | 2010-04-30 16:00 | 2010-04-30 17:00 | 1h? | 0d | Analista Programador | 1h |
| 35 | 1.3.5 | Elaborar MCP - Matriz CU Pruebas Funcionales | 1h? | 2010-04-28 14:20 | 2010-04-28 15:20 | 34 | 2010-04-30 17:00 | 2010-04-30 18:00 | 1h? | 0d | Analista Programador | 1h |
| 36 | 1.3.6 | Elaborar MCC - Matriz CU Pruebas Componentes (O) | 1h? | 2010-04-28 15:20 | 2010-04-28 16:20 | 35 | 2010-04-30 18:00 | 2010-05-03 09:00 | 1h? | 0d | Analista de Calidad | 1h |
| 37 | 1.3.7 | Presentar y aprobar PPR,MSE, MCP | 1h? | 2010-04-28 16:20 | 2010-04-28 17:20 | 36 | 2010-05-03 09:00 | 2010-05-03 10:00 | 1h? | 0d | Analista Programador; Jefe de Proyecto; Usuario | 3h |
| 38 | 1.4 | **Desarrollo** | 0.74d? | 2010-04-28 17:20 | 2010-04-29 14:50 | 30 | 2010-05-03 10:00 | 2010-05-03 19:00 | 0.84d? | 0d |  | 9h |
| 39 | 1.4.1 | Detallar actividades a programar | 1h? | 2010-04-28 17:20 | 2010-04-28 18:20 | 37 | 2010-05-03 10:00 | 2010-05-03 11:00 | 1h? | 0d | Analista Programador; Programador | 2h |
| 40 | 1.4.2 | Revisar DEP - Estándares de Desarrollo / Programación (O) | 1h? | 2010-04-28 18:20 | 2010-04-29 08:50 | 39 | 2010-05-03 11:00 | 2010-05-03 12:00 | 1h? | 0d | Programador; Arquitecto | 2h |
| 41 | 1.4.3 | Elaborar DPU - Documento de Pruebas unitarias | 1h? | 2010-04-29 08:50 | 2010-04-29 09:50 | 40 | 2010-05-03 12:00 | 2010-05-03 13:00 | 1h? | 0d | Programador | 1h |
| 42 | 1.4.4 | **Pruebas Unitarias** | 0.42d? | 2010-04-29 09:50 | 2010-04-29 14:50 | 41 | 2010-05-03 15:00 | 2010-05-03 19:00 | 0.42d? | 0d |  | 4h |
| 43 | 1.4.4.1 | Identificar casos de pruebas | 1h? | 2010-04-29 09:50 | 2010-04-29 10:50 | 41 | 2010-05-03 15:00 | 2010-05-03 16:00 | 1h? | 0d | Programador | 1h |
| 44 | 1.4.4.2 | Ejecutar pruebas | 1h? | 2010-04-29 10:50 | 2010-04-29 11:50 | 43 | 2010-05-03 16:00 | 2010-05-03 17:00 | 1h? | 0d | Programador | 1h |
| 45 | 1.4.4.3 | Elaborar CPP - Catálogo de Resultados de Pruebas Parciales | 1h? | 2010-04-29 11:50 | 2010-04-29 12:50 | 44 | 2010-05-03 17:00 | 2010-05-03 18:00 | 1h? | 0d | Programador | 1h |
| 46 | 1.4.4.4 | Levantar observacioens detectadas | 1h? | 2010-04-29 12:50 | 2010-04-29 14:50 | 45 | 2010-05-03 18:00 | 2010-05-03 19:00 | 1h? | 0d | Programador | 1h |
| 47 | 1.5 | **Certificación** | 1.79d? | 2010-04-29 14:50 | 2010-05-03 12:20 | 38 | 2010-05-04 08:30 | 2010-05-05 13:00 | 1.47d? | 0d |  | 18h |
| 48 | 1.5.1 | Elaborar CPI - Catálogo de Resultados de Pruebas Integrales | 1h? | 2010-04-29 14:50 | 2010-04-29 15:50 |  | 2010-05-04 08:30 | 2010-05-04 09:30 | 1h? | 0d | Analista de Calidad | 1h |
| 49 | 1.5.2 | **Pruebas Integrales Internas** | 0.53d? | 2010-04-29 15:50 | 2010-04-30 10:20 | 48 | 2010-05-04 09:30 | 2010-05-04 15:30 | 0.53d? | 0d |  | 5h |
| 50 | 1.5.2.1 | Ejecutar pruebas | 1h? | 2010-04-29 15:50 | 2010-04-29 16:50 | 48 | 2010-05-04 09:30 | 2010-05-04 10:30 | 1h? | 0d | Analista de Calidad | 1h |
| 51 | 1.5.2.2 | Actualizar CPI con resultado de pruebas | 1h? | 2010-04-29 16:50 | 2010-04-29 17:50 | 50 | 2010-05-04 10:30 | 2010-05-04 11:30 | 1h? | 0d | Analista de Calidad | 1h |
| 52 | 1.5.2.3 | Levantar observaciones | 1h? | 2010-04-29 17:50 | 2010-04-29 18:50 | 51 | 2010-05-04 11:30 | 2010-05-04 12:30 | 1h? | 0d | Programador | 1h |
| 53 | 1.5.2.4 | Validar levantamiento de observaciones | 1h? | 2010-04-29 18:50 | 2010-04-30 09:20 | 52 | 2010-05-04 12:30 | 2010-05-04 14:30 | 1h? | 0d | Analista de Calidad | 1h |
| 54 | 1.5.2.5 | Validar IPI - Informe de Pruebas Internas | 1h? | 2010-04-30 09:20 | 2010-04-30 10:20 | 53 | 2010-05-04 14:30 | 2010-05-04 15:30 | 1h? | 0d | Analista de Calidad | 1h |

| ID | WBS | Task | Duration | Start | Finish | Predecessors | Baseline start | Baseline finish | Baseline duration | Total slack | Resources | Work |
| --- | --- | --- | --- | --- | --- | --- | --- | --- | --- | --- | --- | --- |
| 55 | 1.5.3 | **Pruebas Integrales Usuario** | 0.95d? | 2010-04-30 10:20 | 2010-05-03 10:20 | 49 | 2010-05-04 15:30 | 2010-05-05 11:00 | 0.63d? | 0d |  | 10h |
| 56 | 1.5.3.1 | Ejecutar pruebas | 1h? | 2010-04-30 10:20 | 2010-04-30 11:20 |  | 2010-05-04 15:30 | 2010-05-04 16:30 | 1h? | 0d | Usuario | 1h |
| 57 | 1.5.3.2 | Actualizar CPI con resultado de pruebas | 1h? | 2010-04-30 11:20 | 2010-04-30 12:20 | 56 | 2010-05-04 16:30 | 2010-05-04 17:30 | 1h? | 0d | Usuario | 1h |
| 58 | 1.5.3.3 | Evaluar CPI con resultado de pruebas de usuario | 1h? | 2010-04-30 12:20 | 2010-04-30 14:20 | 57 |  |  |  | 0d | Analista Programador; Jefe de Proyecto | 2h |
| 59 | 1.5.3.4 | Levantar observaciones | 1h? | 2010-04-30 14:20 | 2010-04-30 15:20 | 58 | 2010-05-04 17:30 | 2010-05-04 18:30 | 1h? | 0d | Programador | 1h |
| 60 | 1.5.3.5 | Validar levantamiento de observaciones | 1h? | 2010-04-30 15:20 | 2010-04-30 16:20 | 59 | 2010-05-04 18:30 | 2010-05-05 09:00 | 1h? | 0d | Analista de Calidad | 1h |
| 61 | 1.5.3.6 | **Pruebas de aceptación de usuario** | 0.32d? | 2010-04-30 16:20 | 2010-05-03 09:20 | 60 |  |  |  | 0d |  | 3h |
| 62 | 1.5.3.6.1 | Ejecutar pruebas | 1h? | 2010-04-30 16:20 | 2010-04-30 17:20 |  |  |  |  | 0d | Usuario | 1h |
| 63 | 1.5.3.6.2 | Actualizar CPI con resultado de pruebas | 1h? | 2010-04-30 17:20 | 2010-04-30 18:20 | 62 |  |  |  | 0d | Usuario | 1h |
| 64 | 1.5.3.6.3 | Elaborar AAP - Acta de Aceptación de Prueba | 1h? | 2010-04-30 18:20 | 2010-05-03 09:20 | 63 | 2010-05-05 10:00 | 2010-05-05 11:00 | 1h? | 0d | Usuario | 1h |
| 65 | 1.5.3.7 | Revisar CPA - Catalogo de Resultados de Pruebas Aceptación | 1h? | 2010-05-03 09:20 | 2010-05-03 10:20 | 64 | 2010-05-05 09:00 | 2010-05-05 10:00 | 1h? | 0d | Analista Programador | 1h |
| 66 | 1.5.4 | Elaborar MCA - Material de capacitación (O) | 1h? | 2010-05-03 10:20 | 2010-05-03 11:20 | 65 | 2010-05-05 11:00 | 2010-05-05 12:00 | 1h? | 0d | Analista Programador | 1h |
| 67 | 1.5.5 | Elaborar MUS - Manual de Usuario (O) | 1h? | 2010-05-03 11:20 | 2010-05-03 12:20 | 66 | 2010-05-05 12:00 | 2010-05-05 13:00 | 1h? | 0d | Analista Programador | 1h |
| 68 | 1.6 | **Despliegue** | 0.53d? | 2010-05-03 12:20 | 2010-05-03 18:20 | 47 | 2010-05-05 14:00 | 2010-05-05 19:00 | 0.53d? | 0d |  | 5h |
| 69 | 1.6.1 | **Pase a Producción** | 0.21d? | 2010-05-03 12:20 | 2010-05-03 15:20 |  | 2010-05-05 14:00 | 2010-05-05 16:00 | 0.21d? | 0d |  | 2h |
| 70 | 1.6.1.1 | Elaborar SPP - Solicitud de Pase a Producción | 1h? | 2010-05-03 12:20 | 2010-05-03 14:20 |  | 2010-05-05 14:00 | 2010-05-05 15:00 | 1h? | 0d | Analista Programador | 1h |
| 71 | 1.6.1.2 | Coordinar y ejecutar Pase a Producción | 1h? | 2010-05-03 14:20 | 2010-05-03 15:20 | 70 | 2010-05-05 15:00 | 2010-05-05 16:00 | 1h? | 0d | Analista Programador | 1h |
| 72 | 1.6.2 | Coordinar y efectuar PSU - Presentación del Sistema a Usuarios (O) | 1h? | 2010-05-03 15:20 | 2010-05-03 16:20 | 69 | 2010-05-05 16:00 | 2010-05-05 17:00 | 1h? | 0d | Analista Programador | 1h |
| 73 | 1.6.3 | Elaborar RCA - Registro de capacitación (O) | 1h? | 2010-05-03 16:20 | 2010-05-03 17:20 | 72 | 2010-05-05 17:00 | 2010-05-05 18:00 | 1h? | 0d | Analista Programador | 1h |
| 74 | 1.6.4 | Elaborar ROP - Registro de Observaciones Post Implementación (O) | 1h? | 2010-05-03 17:20 | 2010-05-03 18:20 | 73 | 2010-05-05 18:00 | 2010-05-05 19:00 | 1h? | 0d | Analista Programador | 1h |

Notes:
- 58: Se debe de clasificar las observaciones reportadas segun sean: / 1.-Para correccion inmediata / -Criticas / -No criticas / 2.-Para revisión por ser cambios / -Aportes / -Cambios
